# ProjetoCinefy

Schedule from MS Project, 2020-08-24 to 2021-06-18, costs in R$, A marks actual dates.

## Calendars

- Padrão: Mon-Fri 09:00-12:00, 13:00-18:00; Sat-Sun off.

## Resources

| Resource |
| --- |
| Projetista de Software |
| Analista de sistema uml |
| R$ 70,00 |
| Engenherio de Software |
| Front-End |
| Full-Stack |

## Schedule

| ID | WBS | Task | Type | Duration | Start | Finish | Predecessors | Complete | Remaining | Actual start | Baseline start | Baseline finish | Baseline duration | Total slack | Deadline | Resources | Work | Actual work | Cost | Baseline cost | Actual cost | %Prevista |
| --- | --- | --- | --- | --- | --- | --- | --- | --- | --- | --- | --- | --- | --- | --- | --- | --- | --- | --- | --- | --- | --- | --- |
| 1 | 1 | **Projeto de Final de Curso - Cinefy** |  | 214d | 2020-08-24 A | 2021-06-18 |  | 77% | 49.16d |  | 2020-08-24 | 2021-06-18 | 214d | 0d |  |  | 976h | 736h | 12,770 | 12,770 | 7,310 | 100% |
| 2 | 1.1 | **Documentação Cinefy** |  | 71d | 2020-08-24 A | 2020-12-01 A |  | 100% |  |  | 2020-08-24 | 2020-12-01 | 71d |  |  |  | 560h | 560h | 3,520 | 3,520 | 3,520 | 100% |
| 3 | 1.1.1 | Documento de introdução do PFC | manual | 1d | 2020-08-24 A | 2020-08-24 A |  | 100% |  |  | 2020-08-24 | 2020-08-24 | 1d |  |  | Analista de sistema uml | 8h | 8h | 70 | 70 | 70 | 100% |
| 4 | 1.1.2 | Documento de visão | manual | 10d | 2020-08-26 A | 2020-09-08 A | 3 | 100% |  |  | 2020-08-26 | 2020-09-08 | 10d |  |  | Analista de sistema uml | 80h | 80h | 700 | 700 | 700 | 100% |
| 5 | 1.1.3 | Atividades do negócio |  | 6d | 2020-09-09 A | 2020-09-16 A | 4 | 100% |  |  | 2020-09-09 | 2020-09-16 | 6d |  |  | Analista de sistema uml | 48h | 48h | 420 | 420 | 420 | 100% |
| 6 | 1.1.4 | Documento de requisitos | manual | 5d | 2020-09-17 A | 2020-09-23 A | 5 | 100% |  |  | 2020-09-17 | 2020-09-23 | 5d |  |  | Analista de sistema uml | 40h | 40h | 350 | 350 | 350 | 100% |
| 7 | 1.1.5 | Relatório de viablidade | manual | 5d | 2020-09-24 A | 2020-09-30 A | 6 | 100% |  |  | 2020-09-24 | 2020-09-30 | 5d |  |  | Analista de sistema uml | 40h | 40h | 350 | 350 | 350 | 100% |
| 8 | 1.1.6 | Início da diagramação da UML | milestone, manual | 0d | 2020-10-01 A | 2020-10-01 A | 7 | 100% |  |  | 2020-10-01 | 2020-10-01 | 0d |  |  |  |  |  |  |  |  | 100% |
| 9 | 1.1.7 | **UML** |  | 43d | 2020-10-01 A | 2020-11-30 A |  | 100% |  |  | 2020-10-01 | 2020-11-30 | 43d |  |  |  | 344h | 344h | 1,630 | 1,630 | 1,630 | 100% |
| 10 | 1.1.7.1 | Diagrama de caso de uso geral | manual | 8d | 2020-10-01 A | 2020-10-12 A | 8 | 100% |  |  | 2020-10-01 | 2020-10-12 | 8d |  |  | Analista de sistema uml | 64h | 64h | 560 | 560 | 560 | 100% |
| 11 | 1.1.7.2 | Especificação de caso de uso | manual | 6d | 2020-10-13 A | 2020-10-20 A | 10 | 100% |  |  | 2020-10-13 | 2020-10-20 | 6d |  |  | Analista de sistema uml | 48h | 48h | 420 | 420 | 420 | 100% |
| 12 | 1.1.7.3 | Diagrama de classe | manual | 6d | 2020-10-21 A | 2020-10-28 A | 11 | 100% |  |  | 2020-10-21 | 2020-10-28 | 6d |  |  | Analista de sistema uml | 48h | 48h | 420 | 420 | 420 | 100% |
| 13 | 1.1.7.4 | Correções das documentações e UML | manual | 23d | 2020-10-29 A | 2020-11-30 A | 12 | 100% |  |  | 2020-10-29 | 2020-11-30 | 23d |  |  | Analista de sistema uml | 184h | 184h | 230 | 230 | 230 | 100% |
| 14 | 1.1.8 | Finalização do semestre | milestone, manual | 0d | 2020-12-01 A | 2020-12-01 A |  | 100% |  |  | 2020-12-01 | 2020-12-01 | 0d |  |  |  |  |  |  |  |  | 100% |
| 15 | 1.2 | **Recesso** |  | 52d | 2020-12-01 A | 2021-02-10 A | 2 | 100% |  |  | 2020-12-01 | 2021-02-10 | 52d |  |  |  |  |  |  |  |  | 100% |
| 16 | 1.2.1 | Imersão JavaScript | manual | 15d | 2020-12-01 A | 2020-12-21 A |  | 100% |  |  | 2020-12-01 | 2020-12-21 | 15d |  |  |  |  |  |  |  |  | 100% |
| 17 | 1.2.2 | Férias | manual | 24d | 2020-12-22 A | 2021-01-22 A |  | 100% |  |  | 2020-12-22 | 2021-01-22 | 24d |  |  |  |  |  |  |  |  | 100% |
| 18 | 1.2.3 | Retorno aos estudos de programação | manual | 13d | 2021-01-25 A | 2021-02-10 A |  | 100% |  |  | 2021-01-25 | 2021-02-10 | 13d |  |  |  |  |  |  |  |  | 100% |
| 19 | 1.2.4 | Retorno ao projeto | milestone, manual | 0d | 2021-02-10 A | 2021-02-10 A |  | 100% |  |  | 2021-02-10 | 2021-02-10 | 0d |  |  |  |  |  |  |  |  | 100% |
| 20 | 1.3 | **Diagrama de Sequência** |  | 32d | 2021-02-11 | 2021-03-26 A | 15 | 100% |  | 2021-02-12 | 2021-02-11 | 2021-03-26 | 32d |  |  |  | 32h | 32h | 2,170 | 2,170 | 2,170 | 100% |
| 21 | 1.3.1 | CreateResenha | manual | 4d | 2021-02-12 A | 2021-02-17 A |  | 100% |  |  | 2021-02-12 | 2021-02-17 | 4d |  | 2020-02-17 | Analista de sistema uml | 32h | 32h | 280 | 280 | 280 | 100% |
| 22 | 1.3.2 | CreateUsuario | manual | 4d | 2021-02-18 A | 2021-02-23 A | 21 | 100% |  |  | 2021-02-18 | 2021-02-23 | 4d |  |  |  |  |  | 280 | 280 | 280 | 100% |
| 23 | 1.3.3 | DeleteUsuario | manual | 4d | 2021-02-24 A | 2021-03-01 A | 22 | 100% |  |  | 2021-02-24 | 2021-03-01 | 4d |  |  |  |  |  | 280 | 280 | 280 | 100% |
| 24 | 1.3.4 | DeleteResenha | manual | 4d | 2021-03-02 A | 2021-03-05 A | 23 | 100% |  |  | 2021-03-02 | 2021-03-05 | 4d |  |  |  |  |  | 280 | 280 | 280 | 100% |
| 25 | 1.3.5 | ReadResenha | manual | 4d | 2021-03-08 A | 2021-03-11 A | 24 | 100% |  |  | 2021-03-08 | 2021-03-11 | 4d |  |  |  |  |  | 280 | 280 | 280 | 100% |
| 26 | 1.3.6 | ReadUsuario | manual | 4d | 2021-03-12 A | 2021-03-17 A | 25 | 100% |  |  | 2021-03-12 | 2021-03-17 | 4d |  |  |  |  |  | 280 | 280 | 280 | 100% |
| 27 | 1.3.7 | UpdateResenha | manual | 4d | 2021-03-18 A | 2021-03-23 A | 26 | 100% |  |  | 2021-03-18 | 2021-03-23 | 4d |  |  |  |  |  | 280 | 280 | 280 | 100% |
| 28 | 1.3.8 | UpdateUsuario | manual | 3d | 2021-03-24 A | 2021-03-26 A | 27 | 100% |  |  | 2021-03-24 | 2021-03-26 | 3d |  |  |  |  |  | 210 | 210 | 210 | 100% |

Notes:
- 3: Foi definido o grupo e o Tema do projeto Cinefy
- 4: Foi discutido e definido com o grupo os seguintes itens do projeto: / ·Objetivo / ·Necessidade do Negócio / ·Definição do escopo / ·Premissas do sistema / ·Restrições do sistema / ·Formalização da equipe / ·Especificações técnicas / ·Análise de risco / ·Cronograma de marcos resumidos / ·Orçamento Resumido
- 5: Foi discutido e definido com o grupo as seguintes atividades de negócio: / ·Cadastro de usuário / ·Indicação de filmes / ·Análise de filmes
- 6: ·1 Controle de Versão. / ·2 Documento de requisitos / ·2.1 Objetivo do Documento / ·2.2 Técnicas utilizadas na elucidação de requisitos / ·2.3 Descritivo do processo de negócio / ·2.3.1 Processo de negócio / ·2.3.2 Problemas apresentados / ·2.4 Proposta de software / ·2.5 Definições, acrônimos e abreviações / ·2.6 Lista de requisitos / ·2.6.1 Requisitos Funcionais / ·2.6.2 Requisitos não funcionais / ·2.6.3 Regras de negócio
- 7: RELATÓRIO DE VIABILIDADE/ ·3.1 Introdução / ·3.2 Objetivos do documento / ·3.3 Descritivo do processo de negócio / ·3.3.1 Processo de negócio / ·3.3.2 Descrição do Problema / ·3.3.3 Alternativas de solução / ·3.4 Testes de viabilidade / ·3.4.1 estudo de viabilidade operacional / ·3.4.2 Estudo de viabilidade técnico / ·3.4.3 Estudo de viabilidade de cronograma. / ·3.4.4 Matriz de viabilidade BCG
- 9: Inicio da diagramação dos documentos de UML
- 10: Foi definido e diagramado o caso de uso geral do sistema Cinefy
- 11: Foi especificado cada necessidade dos módulos presente no sistema
- 12: Foi especificado as classes de domínio do sistema
- 13: Correções feitas após as devidas orientações dos professores envolvidos.
- 16: Conforme os integrantes do grupo não tinham conhecimento nas tecnologias Node.JS e React.JS foi decido que todos estudariam para dar inicio a programação do projeto

| ID | WBS | Task | Type | Duration | Start | Finish | Predecessors | Complete | Baseline start | Baseline finish | Baseline duration | Total slack | Resources | Work | Actual work | Cost | Baseline cost | Actual cost | %Prevista |
| --- | --- | --- | --- | --- | --- | --- | --- | --- | --- | --- | --- | --- | --- | --- | --- | --- | --- | --- | --- |
| 29 | 1.4 | **Arquitetura de Sistemas** |  | 26d | 2021-02-19 A | 2021-03-26 A |  | 100% | 2021-02-19 | 2021-03-26 | 26d |  |  | 144h | 144h | 1,620 | 1,620 | 1,620 | 100% |
| 30 | 1.4.1 | Diagrama de contexto | manual | 6d | 2021-02-19 A | 2021-02-26 A |  | 100% | 2021-02-19 | 2021-02-26 | 6d |  | Engenherio de Software | 48h | 48h | 540 | 540 | 540 | 100% |
| 31 | 1.4.2 | Diagrama de pacotes | manual | 6d | 2021-03-05 A | 2021-03-12 A | 30 | 100% | 2021-03-05 | 2021-03-12 | 6d |  | Engenherio de Software | 48h | 48h | 540 | 540 | 540 | 100% |
| 32 | 1.4.3 | Diagrama de componentes da aplicação/software | manual | 6d | 2021-03-19 A | 2021-03-26 A | 31 | 100% | 2021-03-19 | 2021-03-26 | 6d |  | Engenherio de Software | 48h | 48h | 540 | 540 | 540 | 100% |
| 33 | 1.5 | Diagrama de dados | manual | 4d | 2021-04-01 | 2021-04-06 |  |  | 2021-04-01 | 2021-04-06 | 4d |  | Engenherio de Software | 32h |  | 360 | 360 |  | 100% |
| 34 | 1.6 | Início do desenvolvimento | milestone, manual | 0d | 2021-04-21 | 2021-04-21 |  |  | 2021-04-21 | 2021-04-21 | 0d |  |  |  |  |  |  |  | 100% |
| 35 | 1.7 | **Desenvolvimento do sistema** |  | 47d | 2021-04-07 | 2021-06-10 | 33 |  | 2021-04-07 | 2021-06-10 | 47d | 0d |  | 208h |  | 5,100 | 5,100 |  | 100% |
| 36 | 1.7.1 | Página index | manual | 3d | 2021-04-07 | 2021-04-09 |  |  | 2021-04-07 | 2021-04-09 | 3d |  | Front-End | 24h |  | 300 | 300 |  | 100% |
| 37 | 1.7.2 | Página Cadastro | manual | 4d | 2021-04-12 | 2021-04-15 | 36 |  | 2021-04-12 | 2021-04-15 | 4d |  | Full-Stack | 32h |  | 800 | 800 |  | 100% |
| 38 | 1.7.3 | Página Login | manual | 5d | 2021-04-16 | 2021-04-22 | 37 |  | 2021-04-16 | 2021-04-22 | 5d |  | Full-Stack | 40h |  | 1,000 | 1,000 |  | 100% |
| 39 | 1.7.4 | Página Trailers dos Filmes | manual | 8d | 2021-04-23 | 2021-05-04 | 38 |  | 2021-04-23 | 2021-05-04 | 8d |  | Full-Stack | 64h |  | 1,600 | 1,600 |  | 100% |
| 40 | 1.7.5 | Componente Comentários Trailer | manual | 6d | 2021-05-05 | 2021-05-12 | 39 |  | 2021-05-05 | 2021-05-12 | 6d |  | Full-Stack | 48h |  | 1,400 | 1,400 |  | 100% |
| 41 | 1.7.6 | **Admin** |  | 24d | 2021-05-10 | 2021-06-10 |  |  | 2021-05-10 | 2021-06-10 | 24d | 0d |  |  |  |  |  |  | 100% |
| 42 | 1.7.6.1 | Páginas da Dashboard | manual | 7d | 2021-05-10 | 2021-05-18 |  |  | 2021-05-10 | 2021-05-18 | 7d |  |  |  |  |  |  |  | 100% |
| 43 | 1.7.6.2 | Gerenciar Trailer | manual | 7d | 2021-05-24 | 2021-06-01 |  |  | 2021-05-24 | 2021-06-01 | 7d |  |  |  |  |  |  |  | 100% |
| 44 | 1.7.6.3 | Gerenciar usuários | manual | 7d | 2021-06-02 | 2021-06-10 |  |  | 2021-06-02 | 2021-06-10 | 7d |  |  |  |  |  |  |  | 100% |
| 45 | 1.8 | Entrega do Projeto parte 1 | milestone, manual | 0d | 2021-06-18 | 2021-06-18 | 41 |  | 2021-06-18 | 2021-06-18 | 0d |  |  |  |  |  |  |  | 100% |

Notes:
- 37: Criar: / Front-end : / ·Campos de cadastro / Back-end: / ·Lógica de cadastro
- 38: Criar: / Front-end : / ·Campos de login / Back-end: / ·Lógica de login
- 39: Criar: / Front-end : / ·Paginações e ou Carousel / ·Seções de Filmes / Back-end: / ·Lógica da paginação
- 40: Criar: / Front-end : / ·Title / ·TextArea / Back-end: / ·Lógica de comentários de usuários
- 42: Criar: / Front-end : / ·Campos de login da dashboard / ·Index da dashboard com menu / Back-end: / ·Lógica do login da dashboard
- 43: Ocultar os trailer das páginas
- 44: Excluir usuários do site
